# Console

How a schedule from MS Project changed from version to version. A marks actual dates.

## Version 1 (saved 2010-05-12)

Note of the change: Added a new Gantt diagram and deleted the old one.

| ID | WBS | Task | Duration | Start | Finish | Predecessors | Total float | Constraint |
| --- | --- | --- | --- | --- | --- | --- | --- | --- |
| 1 |  | Choix du micro-controlleur | 21d? | 2009-12-06 | 2009-12-26 |  | 6d | finish no earlier than 2009-12-26 |
| 2 |  | Programmation du "bootstrap" | 1d? | 2009-12-27 | 2009-12-27 | 1 | 6d |  |
| 3 |  | Adaptation du Makefile | 1d? | 2009-12-31 | 2009-12-31 | 1 | 6d | start no earlier than 2009-12-31 |
| 4 |  | Adaptation du linker script | 1d? | 2010-01-02 | 2010-01-02 | 1 | 4d | start no earlier than 2010-01-02 |
| 5 |  | Implementation des classes Gpio et GpioPin | 3d? | 2010-01-07 | 2010-01-09 | 4, 3, 2 | 84d | finish no earlier than 2010-01-09 |
| 6 |  | Configuration du PLL | 1d? | 2010-01-09 | 2010-01-09 |  | 16d | start no earlier than 2010-01-09 |
| 7 |  | Configuration des interruptions | 10d? | 2010-01-13 | 2010-01-22 |  | 3d | finish no earlier than 2010-01-22 |
| 8 |  | Initialisation du module USB | 4d? | 2010-01-22 | 2010-01-25 |  | 24d | finish no earlier than 2010-01-25 |
| 9 |  | Attente de réception de la carte de développement | 24d? | 2010-01-25 | 2010-02-17 |  | 7d | finish no earlier than 2010-02-17 |
| 10 |  | Test de la section Gpio | 1d? | 2010-02-18 | 2010-02-18 | 9 | 7d | start no earlier than 2010-02-18 |
| 11 |  | Test de l'initialisation USB | 1d? | 2010-02-21 | 2010-02-21 |  | 4d | start no earlier than 2010-02-21 |
| 12 |  | Programmation du module LCD | 4d? | 2010-02-22 | 2010-02-25 |  | 90d | finish no earlier than 2010-02-25 |
| 13 |  | Programmation du module SDRAM | 2d? | 2010-02-24 | 2010-02-25 |  | 90d | finish no earlier than 2010-02-25 |
| 14 |  | Implémentation de la class DisplayHelper pour l'affichage d'image | 2d? | 2010-02-26 | 2010-02-27 | 13, 12 | 90d | finish no earlier than 2010-02-27 |
| 15 |  | Test d'une image animée sur le LCD | 1d? | 2010-02-28 | 2010-02-28 |  | 89d | start no earlier than 2010-02-28 |
| 16 |  | Travail sur l'affichage de police à l'écran | 4d? | 2010-03-05 | 2010-03-08 |  | 81d | finish no earlier than 2010-03-08 |
| 17 | 17 | **Programmation du moteur de jeux** | 81d? | 2010-03-05 | 2010-05-24 |  | 0d |  |
| 18 |  | Planification de l'implémentation | 4d? | 2010-03-05 | 2010-03-08 |  | 22d | finish no earlier than 2010-03-08 |
| 19 |  | Programmation des contenants du moteur | 1d? | 2010-03-09 | 2010-03-09 | 18 | 48d |  |
| 20 |  | Travail sur le DMA | 1d? | 2010-03-13 | 2010-03-13 |  | 62d | start no earlier than 2010-03-13 |
| 21 |  | Test du Tile rendering et scrolling | 1d? | 2010-04-26 | 2010-04-26 |  | 18d | start no earlier than 2010-04-26 |
| 22 |  | Travail sur le background rendering | 1d? | 2010-04-27 | 2010-04-27 |  | 17d | start no earlier than 2010-04-27 |
| 23 |  | Optimisation du background rendering | 1d? | 2010-04-28 | 2010-04-28 |  | 16d | start no earlier than 2010-04-28 |
| 24 |  | Développement du hero | 16d? | 2010-04-29 | 2010-05-14 |  | 10d | finish no earlier than 2010-05-14 |
| 25 |  | Développement des ennemis | 8d? | 2010-05-17 | 2010-05-24 |  | 0d | finish no earlier than 2010-05-24 |
| 26 |  | Modification de la configuration du PLL | 1d? | 2010-03-23 | 2010-03-23 |  | 34d | start no earlier than 2010-03-23 |
| 27 |  | Configuration du module pour carte SD | 3d? | 2010-03-25 | 2010-03-27 |  | 30d | finish no earlier than 2010-03-27 |
| 28 |  | Implémentation du support FAT32 | 3d? | 2010-03-25 | 2010-03-27 |  | 30d | finish no earlier than 2010-03-27 |
| 29 |  | Prise en charge des fichier Bitmap | 1d? | 2010-03-30 | 2010-03-30 |  | 27d | start no earlier than 2010-03-30 |
| 30 |  | Gestion du sons | 1d? | 2010-04-03 | 2010-04-03 |  | 23d | start no earlier than 2010-04-03 |
| 31 |  | Prise en charge des fichier Wave | 1d? | 2010-04-03 | 2010-04-03 |  | 23d | start no earlier than 2010-04-03 |

## Version 2 (saved 2010-05-25)

Note of the change: Updated Gantt Added the Sprite class diagram

Last finish 2010-05-24 → 2010-08-04 (+72d).

Added:

| ID | Task | Duration | Start | Finish | Predecessors | Constraint | Resources |
| --- | --- | --- | --- | --- | --- | --- | --- |
| 1 | Analyse de la problématique | 1d? | 2009-12-06 | 2009-12-06 |  |  |  |
| 2 | **Choix d'une solution** | 21d? | 2009-12-06 | 2009-12-26 |  |  |  |
| 4 | **Réalisation** | 221d? | 2009-12-27 | 2010-08-04 | 3 |  |  |
| 5 | **Développement bas niveau** | 210d? | 2009-12-27 | 2010-07-24 |  |  |  |
| 28 | Gestion du sons (async) | 2d? | 2010-05-23 | 2010-05-24 |  | finish no earlier than 2010-05-24 | Francois Gervais |
| 29 | Intégration des timers dans la couche d'abstraction | 2d? | 2010-05-23 | 2010-05-24 |  | finish no earlier than 2010-05-24 | Francois Gervais |
| 30 | Prise en charge du USB | 25d? | 2010-05-26 | 2010-06-19 |  | start no earlier than 2010-05-26 | Francois Gervais |
| 31 | Contrôlleur Xbox360 | 7d? | 2010-06-20 | 2010-06-26 |  | finish no earlier than 2010-06-26 | Francois Gervais |
| 32 | Découplage du moteur et du noyau | 14d? | 2010-06-27 | 2010-07-10 |  | finish no earlier than 2010-07-10 |  |
| 33 | Optimisation | 7d? | 2010-07-11 | 2010-07-17 |  | finish no earlier than 2010-07-17 |  |
| 34 | Intégration de FreeRTOS (au besoin) | 7d? | 2010-07-18 | 2010-07-24 |  | finish no earlier than 2010-07-24 |  |
| 35 | **Développement du moteur de jeux** | 203d? | 2009-12-27 | 2010-07-17 |  |  | Francois Gervais |
| 37 | Programmation du squelette du moteur | 1d? | 2010-03-09 | 2010-03-09 | 36 |  | Francois Gervais |
| 41 | Gestion du hero | 26d? | 2010-04-29 | 2010-05-24 |  | finish no earlier than 2010-05-24 | Francois Gervais |
| 42 | Gestion des ennemis | 8d? | 2010-05-17 | 2010-05-24 |  | finish no earlier than 2010-05-24 | Francois Gervais |
| 43 | Gestion des collisions | 3d? | 2010-05-18 | 2010-05-20 |  | finish no earlier than 2010-05-20 | Francois Gervais |
| 44 | Gestion des effets sonors | 2d? | 2010-05-23 | 2010-05-24 |  | finish no earlier than 2010-05-24 | Francois Gervais |
| 45 | Réfection de la gestion des états | 1d? | 2009-12-27 | 2009-12-27 |  |  | Francois Gervais |
| 46 | Optimisation | 7d? | 2010-07-11 | 2010-07-17 |  | finish no earlier than 2010-07-17 |  |
| 47 | **Développement de jeux** | 19d? | 2010-04-30 | 2010-05-18 |  |  |  |
| 48 | Création du SVN | 1d? | 2010-04-30 | 2010-04-30 |  | start no earlier than 2010-04-30 | Sébastien Fournier |
| 49 | Synchronisation avec le SVN de la console | 13d? | 2010-05-06 | 2010-05-18 |  | finish no earlier than 2010-05-18 | Sébastien Fournier |
| 50 | Rédaction du rapport | 10d? | 2010-07-25 | 2010-08-03 |  | finish no earlier than 2010-08-03 | Équipe Montréal |
| 51 | Présentation finale | 1d? | 2010-08-04 | 2010-08-04 |  | start no earlier than 2010-08-04 | Équipe Montréal |

Removed: 17 Programmation du moteur de jeux; 19 Programmation des contenants du moteur; 24 Développement du hero; 25 Développement des ennemis

Changed:

| ID | Task | Total float | Predecessors | Other |
| --- | --- | --- | --- | --- |
| 6 | Programmation du "bootstrap" | 6d → 217d | 3 → none |  |
| 9 | Intégration des GPIO à la couche d'abstraction | 84d → 207d |  | was named Implementation des classes Gpio et GpioPin |
| 25 | Gestion du sons (sync) | 23d → 123d |  | was named Gestion du sons |

## Version 3 (saved 2010-05-28)

Last finish stays 2010-08-04.

Added:

| ID | Task | Duration | Start | Finish | Constraint | Resources |
| --- | --- | --- | --- | --- | --- | --- |
| 50 | **Développement matériel** | 203d? | 2009-12-27 | 2010-07-17 |  | Jimmy Vaillancourt |
| 51 | Conception du PCB | 55d? | 2010-04-20 | 2010-06-13 | start no earlier than 2010-04-20 | Jimmy Vaillancourt |
| 52 | Test du circuit R2R | 9d? | 2010-05-29 | 2010-06-06 | finish no earlier than 2010-06-06 | Jimmy Vaillancourt |
| 53 | Assemblage du PCB | 6d? | 2010-07-12 | 2010-07-17 | finish no earlier than 2010-07-17 |  |
| 54 | Test du PCB | 1d? | 2009-12-27 | 2009-12-27 | finish no earlier than 2009-12-26 |  |

Changed:

| ID | Task | Start | Duration | Other |
| --- | --- | --- | --- | --- |
| 55 | Rédaction du rapport | 2010-07-25 → 2010-06-13 (-42d) | 10d? → 52d? | constraint finish no earlier than 2010-08-03 → start no earlier than 2010-06-13 |
